# Cronograma Health Track

Schedule from MS Project, 2018-03-06 to 2018-11-15, costs in R$.

## Calendars

- Padrão: Mon-Fri 09:00-12:00, 13:00-18:00; Sat-Sun off.

## Resources

| Resource | Rate |
| --- | --- |
| Gerente do Projeto | 50 |
| Cliente |  |
| Desenvolvedor Web |  |
| Desenvolvedor Full Stack | 25 |
| Analista de Sistemas | 35 |
| Desenvolvedor Front-End |  |
| Desenvolvedor Back-End |  |

## Schedule

| ID | WBS | Task | Duration | Start | Finish | Predecessors | Baseline start | Baseline finish | Baseline duration | Total slack | Constraint | Resources | Work | Cost | Baseline cost |
| --- | --- | --- | --- | --- | --- | --- | --- | --- | --- | --- | --- | --- | --- | --- | --- |
| 1 | 1 | **Projeto Health Track** | 183d | 2018-03-06 | 2018-11-15 |  | 2018-03-06 | 2018-11-15 | 183d | 0d |  |  | 1488h | 41,960 | 41,960 |
| 2 | 1.1 | **Documentação** | 66d | 2018-03-06 | 2018-06-05 |  | 2018-03-06 | 2018-06-05 | 66d | 0d |  |  | 552h | 18,560 | 18,560 |
| 3 | 1.1.1 | **Documentação de Projeto** | 24d | 2018-03-06 | 2018-04-06 |  | 2018-03-06 | 2018-04-06 | 24d | 0d |  |  | 216h | 9,600 | 9,600 |
| 4 | 1.1.1.1 | Termo de Abertura | 2d | 2018-03-06 | 2018-03-07 |  | 2018-03-06 | 2018-03-07 | 2d | 0d | start no earlier than 2018-03-06 | Gerente do Projeto | 16h | 800 | 800 |
| 5 | 1.1.1.2 | Plano de Projeto | 7d | 2018-03-08 | 2018-03-16 | 4 | 2018-03-08 | 2018-03-16 | 7d | 0d |  | Gerente do Projeto | 56h | 2,800 | 2,800 |
| 6 | 1.1.1.3 | **Backlog do Produto** | 5d | 2018-03-19 | 2018-03-23 | 5 | 2018-03-19 | 2018-03-23 | 5d | 0d |  |  | 40h | 2,000 | 2,000 |
| 7 | 1.1.1.3.1 | Elaboração da EAP | 3d | 2018-03-19 | 2018-03-21 | 5 | 2018-03-19 | 2018-03-21 | 3d | 0d |  | Gerente do Projeto | 24h | 1,200 | 1,200 |
| 8 | 1.1.1.3.2 | Kanban | 2d | 2018-03-22 | 2018-03-23 | 7 | 2018-03-22 | 2018-03-23 | 2d | 0d |  | Gerente do Projeto | 16h | 800 | 800 |
| 9 | 1.1.1.4 | **Cronograma Inicial** | 10d | 2018-03-26 | 2018-04-06 |  | 2018-03-26 | 2018-04-06 | 10d | 0d |  |  | 104h | 4,000 | 4,000 |
| 10 | 1.1.1.4.1 | Elaborar Cronograma Inicial | 7d | 2018-03-26 | 2018-04-03 | 8 | 2018-03-26 | 2018-04-03 | 7d | 0d |  | Gerente do Projeto | 56h | 2,800 | 2,800 |
| 11 | 1.1.1.4.2 | Validar Cronograma Inicial | 3d | 2018-04-04 | 2018-04-06 | 10 | 2018-04-04 | 2018-04-06 | 3d | 0d |  | Gerente do Projeto; Cliente | 48h | 1,200 | 1,200 |
| 12 | 1.1.2 | **Documentação Técnica** | 42d | 2018-04-09 | 2018-06-05 | 11 | 2018-04-09 | 2018-06-05 | 42d | 0d |  |  | 336h | 8,960 | 8,960 |
| 13 | 1.1.2.1 | Documentação de Casos de Uso | 7d | 2018-04-09 | 2018-04-17 | 11 | 2018-04-09 | 2018-04-17 | 7d | 0d |  | Analista de Sistemas | 56h | 1,960 | 1,960 |
| 14 | 1.1.2.2 | Wireframes | 5d | 2018-04-18 | 2018-04-24 | 13 | 2018-04-18 | 2018-04-24 | 5d | 0d |  | Desenvolvedor Full Stack | 40h | 1,000 | 1,000 |
| 15 | 1.1.2.3 | Diagrama de Classes | 10d | 2018-04-25 | 2018-05-08 | 14 | 2018-04-25 | 2018-05-08 | 10d | 0d |  | Desenvolvedor Full Stack | 80h | 2,000 | 2,000 |
| 16 | 1.1.2.4 | Modelagem Relacional | 10d | 2018-05-09 | 2018-05-22 | 15 | 2018-05-09 | 2018-05-22 | 10d | 0d |  | Desenvolvedor Full Stack | 80h | 2,000 | 2,000 |
| 17 | 1.1.2.5 | Evidências de Testes | 10d | 2018-05-23 | 2018-06-05 | 16 | 2018-05-23 | 2018-06-05 | 10d | 0d |  | Desenvolvedor Full Stack | 80h | 2,000 | 2,000 |
| 18 | 1.2 | **Infraestrutura** | 3d | 2018-06-06 | 2018-06-08 | 17 | 2018-06-06 | 2018-06-08 | 3d | 0d |  |  | 24h | 600 | 600 |
| 19 | 1.2.1 | Aquisição e Instalação de Infraestrutura | 3d | 2018-06-06 | 2018-06-08 | 17 | 2018-06-06 | 2018-06-08 | 3d | 0d |  | Desenvolvedor Full Stack | 24h | 600 | 600 |
| 20 | 1.3 | **Sistema Web** | 114d | 2018-06-11 | 2018-11-15 | 19 | 2018-06-11 | 2018-11-15 | 114d | 0d |  |  | 912h | 22,800 | 22,800 |
| 21 | 1.3.1 | Camada Interfaces (View) | 30d | 2018-06-11 | 2018-07-20 | 19 | 2018-06-11 | 2018-07-20 | 30d | 0d |  | Desenvolvedor Full Stack | 240h | 6,000 | 6,000 |
| 22 | 1.3.2 | Camada Model | 40d | 2018-07-23 | 2018-09-14 | 21 | 2018-07-23 | 2018-09-14 | 40d | 0d |  | Desenvolvedor Full Stack | 320h | 8,000 | 8,000 |
| 23 | 1.3.3 | Camada Interfaces | 44d | 2018-09-17 | 2018-11-15 | 22 | 2018-09-17 | 2018-11-15 | 44d | 0d |  | Desenvolvedor Full Stack | 352h | 8,800 | 8,800 |
